# Neuer Aussenstandort

Schedule from MS Project, 2025-05-26 to 2025-08-01.
IT-AG

## Calendars

- Standard: Mon-Fri 08:00-12:00, 13:00-17:00; Sat-Sun off.

## Schedule

| ID | WBS | Task | Type | Duration | Start | Finish | Predecessors | Total slack | Free slack | Lieferobjekt |
| --- | --- | --- | --- | --- | --- | --- | --- | --- | --- | --- |
| 1 | 1 | **Vor-Analyse** |  | 3d | 2025-05-26 | 2025-05-28 |  | 0d |  |  |
| 2 | 1.1 | Projektauftrag prüfen |  | 1d | 2025-05-26 | 2025-05-26 |  | 0d |  |  |
| 3 | 1.2 | Rahmenbedingungen klären |  | 1d | 2025-05-27 | 2025-05-27 | 2 | 0d |  | Konzept |
| 4 | 1.3 | Risikoanalyse |  | 1d | 2025-05-28 | 2025-05-28 | 3 | 0d |  | Risikobericht |
| 5 | 1.4 | MS: Projekt bewilligt | milestone | 0d | 2025-05-26 | 2025-05-26 |  | 3d |  |  |
| 6 | 2 | **Konzept-Evaluation** |  | 1d? | 2025-05-28 | 2025-05-29 | 1 | 0d |  |  |
| 7 | 2.1 | Pflichtenheft |  | 1d | 2025-05-29 | 2025-05-29 |  | 0d |  | Pflichtenheft |
| 8 | 2.2 | Expertengespräche durchführen |  | 1d? | 2025-05-29 | 2025-05-29 |  | 0d |  |  |
| 9 | 2.3 | MS: Projekt erfolgreich zu Ende gebracht | milestone | 0d | 2025-05-28 | 2025-05-28 |  | 1d |  |  |
| 10 | 3 | **Umsetzungsplanung** |  | 22d | 2025-05-29 | 2025-06-30 | 6 | 0d |  |  |
| 11 | 3.1 | Projektstrukturplan erstellen |  | 2d | 2025-05-30 | 2025-06-02 |  | 0d |  | PSP |
| 12 | 3.2 | Liegenschaftsliste erstellen |  | 4d | 2025-06-03 | 2025-06-06 | 11 | 0d |  | Gebäude rausgesucht |
| 13 | 3.3 | Liegenschaften besichtigen |  | 15d | 2025-06-09 | 2025-06-27 | 12 | 0d |  |  |
| 14 | 3.4 | Nutzwertanalyse der Liegenschaften |  | 1d | 2025-06-30 | 2025-06-30 | 13 | 0d |  | Nutzwertanalyse |
| 15 | 3.5 | MS: Für ein Gebäude entschieden | milestone | 0d | 2025-05-29 | 2025-05-29 |  | 22d |  |  |
| 16 | 4 | **Realisierung** |  | 21d | 2025-06-30 | 2025-07-29 | 10 | 0d |  |  |
| 17 | 4.1 | Mietvertrag prüfen & unterzeichnen |  | 2d | 2025-07-01 | 2025-07-02 |  | 6d | 0d | Vertrag |
| 18 | 4.2 | Einrichtung bestellen |  | 21d | 2025-07-01 | 2025-07-29 |  | 0d |  | Büroeinrichtung |
| 19 | 4.3 | Gebäude übernehmen |  | 3d | 2025-07-03 | 2025-07-07 | 17 | 6d | 0d | Schlüssel für das Gebäude & Papierkram |
| 20 | 4.4 | IT-Infrastruktur einrichten |  | 10d | 2025-07-08 | 2025-07-21 | 19 | 6d |  | Funktionierende Infrastruktur |
| 21 | 4.5 | MS: Standort bereit zur Einführung | milestone | 0d | 2025-06-30 | 2025-06-30 |  | 21d |  |  |
| 22 | 5 | **Einführung** |  | 3d | 2025-07-29 | 2025-08-01 | 16 | 0d |  |  |
| 23 | 5.1 | Neuer Standort den Mitarbeitern übergeben |  | 1d | 2025-07-30 | 2025-07-30 |  | 2d |  |  |
| 24 | 5.2 | Einweihungsfest |  | 2d | 2025-07-30 | 2025-07-31 |  | 0d |  | Glückliche Mitarbeiter |
| 25 | 5.3 | Abschlussmeeting |  | 1d | 2025-08-01 | 2025-08-01 | 24 | 0d |  |  |
| 26 | 5.4 | MS: Projektergebnis erfolgreich getestet und eingeführt | milestone | 0d | 2025-07-29 | 2025-07-29 |  | 3d |  |  |
